# ThakorS_Handstar

Schedule from MS Project, 2021-01-19 to 2021-11-22, costs in $, A marks actual dates.
Handstar
SMART Objectives: / Updating three existing application and developing three new application for users. / Holding leadership in the market. / Achieving 11.5% profit by 31st December 2022 and for next 2 years. / Generating 10% revenue from sale for next three years. / Recruiting 7 new people in software developing department by March 2021. / Finishing the project by 15th July, 2021

## Calendars

- Standard: Mon-Fri 08:00-12:00, 13:00-17:00; Sat-Sun off.

## Resources

| Resource | Rate |
| --- | --- |
| Director | 120 |
| Director of Product development and marketing | 105 |
| Product Business Analyst | 90 |
| Project manager | 85 |
| Software developer | 65 |
| UI/UX Designer | 60 |
| Software Testing Engineer | 60 |
| Software Architect | 75 |
| Marketing Manager | 90 |
| Finance Manager | 70 |
| Project Coordinator | 75 |
| Contingency |  |

## Schedule

| ID | WBS | Task | Type | Duration | Start | Finish | Predecessors | Complete | Remaining | Baseline start | Baseline finish | Baseline duration | Total slack | Constraint | Deadline | Resources | Work | Actual work | Cost | Baseline cost | Actual cost |
| --- | --- | --- | --- | --- | --- | --- | --- | --- | --- | --- | --- | --- | --- | --- | --- | --- | --- | --- | --- | --- | --- |
| 1 | 1 | **Handstar Inc.** |  | 220d | 2021-01-19 A | 2021-11-22 |  | 36% | 141.78d | 2021-01-19 | 2021-11-11 | 213d | 0d |  |  |  | 471.3h | 300.62h | 38,164.05 | 33,257.5 | 20,976.42 |
| 2 | 1.1 | **Conception and initiation** |  | 5d | 2021-01-19 A | 2021-01-25 A |  | 100% |  | 2021-01-19 | 2021-01-25 | 5d |  |  |  |  | 14h | 14h | 1,190 | 1,190 | 1,190 |
| 3 | 1.1.1 | **Develop Project Charter** |  | 5d | 2021-01-19 A | 2021-01-25 A |  | 100% |  | 2021-01-19 | 2021-01-25 | 5d |  |  |  |  | 14h | 14h | 1,190 | 1,190 | 1,190 |
| 4 | 1.1.1.1 | SMART Objectives |  | 1d | 2021-01-19 A | 2021-01-19 A |  | 100% |  | 2021-01-19 | 2021-01-19 | 1d |  |  |  | Project manager [37.5%] | 3h | 3h | 255 | 255 | 255 |
| 5 | 1.1.1.2 | Strategies and plans |  | 1d | 2021-01-20 A | 2021-01-20 A | 4 | 100% |  | 2021-01-20 | 2021-01-20 | 1d |  |  |  | Project manager [62.5%] | 5h | 5h | 425 | 425 | 425 |
| 6 | 1.1.1.3 | Communication method |  | 1d | 2021-01-21 A | 2021-01-21 A | 5 | 100% |  | 2021-01-21 | 2021-01-21 | 1d |  |  |  | Project manager [12.5%] | 1h | 1h | 85 | 85 | 85 |
| 7 | 1.1.1.4 | Risk identification |  | 1d | 2021-01-22 A | 2021-01-22 A | 6 | 100% |  | 2021-01-22 | 2021-01-22 | 1d |  |  |  | Project manager [12.5%] | 1h | 1h | 85 | 85 | 85 |
| 8 | 1.1.1.5 | Business Case |  | 1d | 2021-01-25 A | 2021-01-25 A | 7 | 100% |  | 2021-01-25 | 2021-01-25 | 1d |  |  |  | Project manager [50%] | 4h | 4h | 340 | 340 | 340 |
| 9 | 1.1.1.6 | Passing the project | milestone | 0d | 2021-01-25 A | 2021-01-25 A | 8 | 100% |  | 2021-01-25 | 2021-01-25 | 0d |  |  |  |  |  |  |  |  |  |
| 10 | 1.2 | **Stakeholder Identification** |  | 3d | 2021-01-26 A | 2021-01-28 A | 2 | 100% |  | 2021-01-26 | 2021-01-28 | 3d |  |  |  |  | 3h | 3h | 255 | 255 | 255 |
| 11 | 1.2.1 | **Stakeholder communication plan** |  | 3d | 2021-01-26 A | 2021-01-28 A |  | 100% |  | 2021-01-26 | 2021-01-28 | 3d |  |  |  |  | 3h | 3h | 255 | 255 | 255 |
| 12 | 1.2.1.1 | Power interest grid |  | 1d | 2021-01-26 A | 2021-01-26 A | 9 | 100% |  | 2021-01-26 | 2021-01-26 | 1d |  |  |  | Project manager [12.5%] | 1h | 1h | 85 | 85 | 85 |
| 13 | 1.2.1.2 | Brainstorming map |  | 1d | 2021-01-27 A | 2021-01-27 A | 12 | 100% |  | 2021-01-27 | 2021-01-27 | 1d |  |  |  | Project manager [12.5%] | 1h | 1h | 85 | 85 | 85 |
| 14 | 1.2.1.3 | Stakeholder register |  | 1d | 2021-01-28 A | 2021-01-28 A | 13 | 100% |  | 2021-01-28 | 2021-01-28 | 1d |  |  |  | Project manager [12.5%] | 1h | 1h | 85 | 85 | 85 |
| 15 | 1.3 | **Project Planning** |  | 15d | 2021-01-29 A | 2021-02-18 A | 10 | 100% |  | 2021-01-29 | 2021-02-18 | 15d |  |  |  |  | 41h | 41h | 3,375 | 3,375 | 3,375 |
| 16 | 1.3.1 | **Project Scope** |  | 2d | 2021-01-29 A | 2021-02-01 A |  | 100% |  | 2021-01-29 | 2021-02-01 | 2d |  |  |  |  | 10h | 10h | 850 | 850 | 850 |
| 17 | 1.3.1.1 | Determine Project scope |  | 1d | 2021-01-29 A | 2021-01-29 A | 14 | 100% |  | 2021-01-29 | 2021-01-29 | 1d |  | must finish on 2021-01-29 | 2021-01-29 | Project manager | 8h | 8h | 680 | 680 | 680 |
| 18 | 1.3.1.2 | Project Constrains |  | 1d | 2021-02-01 A | 2021-02-01 A | 17 | 100% |  | 2021-02-01 | 2021-02-01 | 1d |  |  |  | Project manager [25%] | 2h | 2h | 170 | 170 | 170 |
| 19 | 1.3.2 | **Set Project Environments** |  | 13d | 2021-02-02 A | 2021-02-18 A | 16 | 100% |  | 2021-02-02 | 2021-02-18 | 13d |  |  |  |  | 31h | 31h | 2,525 | 2,525 | 2,525 |
| 20 | 1.3.2.1 | Set project environments |  | 2d | 2021-02-02 A | 2021-02-03 A | 18 | 100% |  | 2021-02-02 | 2021-02-03 | 2d |  |  |  | Project Coordinator [25%] | 4h | 4h | 300 | 300 | 300 |
| 21 | 1.3.2.2 | **Project Schedule** |  | 9d | 2021-02-04 A | 2021-02-16 A | 20 | 100% |  | 2021-02-04 | 2021-02-16 | 9d |  |  |  |  | 12h | 12h | 900 | 900 | 900 |
| 22 | 1.3.2.2.1 | Creating Work Breakdown Schedule (WBS) |  | 7d | 2021-02-04 A | 2021-02-12 A | 17 | 100% |  | 2021-02-04 | 2021-02-12 | 7d |  |  |  | Project Coordinator [12.5%] | 7h | 7h | 525 | 525 | 525 |
| 23 | 1.3.2.2.2 | Deciding timeline |  | 2d | 2021-02-15 A | 2021-02-16 A | 22 | 100% |  | 2021-02-15 | 2021-02-16 | 2d |  |  |  | Project Coordinator [31.2%] | 5h | 5h | 375 | 375 | 375 |
| 24 | 1.3.2.3 | **Cost Plan** |  | 2d | 2021-02-17 A | 2021-02-18 A | 21 | 100% |  | 2021-02-17 | 2021-02-18 | 2d |  |  |  |  | 15h | 15h | 1,325 | 1,325 | 1,325 |
| 25 | 1.3.2.3.1 | Cost estimation |  | 2d | 2021-02-17 A | 2021-02-18 A | 17 | 100% |  | 2021-02-17 | 2021-02-18 | 2d |  |  |  | Director of Product development and marketing [31.2%]; Finance Manager [31.2%]; Product Business Analyst [31.2%] | 15h | 15h | 1,325 | 1,325 | 1,325 |

Notes:
- 1: After assigning the resources I saw chances in the work hour and saw the percentage of the of work done by the each resource. By statistics we can change the resources allocated to each activity. / The total cost of the project is $33257.50 and by calculating the 10% contingency the value of contingency amount is $3325. / Due to additional work for designing new softwares and updating the old one, additional new hiring might be required. So, the contingency amount of $1300 is assigned to UX/UI design. $1025 is added to the Software tester, $1000 is added to the Software development.
- 18: Expert judgement technique is used here. The project management officer(PMO) has a great past experience in the software industry. The task is completed, validated and interpreted by the already existing data, and by the experience of the PMO. The task takes less than 1 day to complete as the by the historical data and past experience of PMO will reduce the analysis time of the project constrains.

| ID | WBS | Task | Type | Duration | Start | Finish | Predecessors | Complete | Remaining | Baseline start | Baseline finish | Baseline duration | Total slack | Free slack | Constraint | Resources | Work | Actual work | Cost | Baseline cost | Actual cost |
| --- | --- | --- | --- | --- | --- | --- | --- | --- | --- | --- | --- | --- | --- | --- | --- | --- | --- | --- | --- | --- | --- |
| 26 | 1.4 | **Project Execution** |  | 38d | 2021-02-19 A | 2021-04-13 | 15 | 78% | 8.23d | 2021-02-19 | 2021-04-13 | 38d | 2.8d | 0d |  |  | 223h | 193.4h | 17,095 | 14,795 | 12,133 |
| 27 | 1.4.1 | **Project Team** |  | 7d | 2021-02-19 A | 2021-03-01 A |  | 100% |  | 2021-02-19 | 2021-03-01 | 7d |  |  |  |  | 11h | 11h | 885 | 885 | 885 |
| 28 | 1.4.1.1 | Creating Communication Plan |  | 2d | 2021-02-19 A | 2021-02-22 A | 18 | 100% |  | 2021-02-19 | 2021-02-22 | 2d |  |  |  | Project manager [18.8%] | 3h | 3h | 255 | 255 | 255 |
| 29 | 1.4.1.2 | Providing team training |  | 5d | 2021-02-19 A | 2021-02-25 A | 22, 23 | 100% |  | 2021-02-19 | 2021-02-25 | 5d |  |  |  | Project Coordinator [12.5%] | 5h | 5h | 375 | 375 | 375 |
| 30 | 1.4.1.3 | Controlling the team |  | 2d | 2021-02-26 A | 2021-03-01 A | 18, 28, 29 | 100% |  | 2021-02-26 | 2021-03-01 | 2d |  |  | start no earlier than 2021-02-17 | Project manager [18.8%] | 3h | 3h | 255 | 255 | 255 |
| 31 | 1.4.2 | **Developing** |  | 20d | 2021-03-02 A | 2021-03-29 | 27 | 95% | 1d | 2021-03-02 | 2021-03-29 | 20d | 0d |  |  |  | 192h | 182.4h | 14,140 | 11,840 | 11,248 |
| 32 | 1.4.2.1 | Design the software |  | 20d | 2021-03-02 A | 2021-03-29 | 29, 30 | 95% | 1d | 2021-03-02 | 2021-03-29 | 20d | 0d |  |  | Software Architect [5%]; Software developer [5%]; UI/UX Designer; Contingency [0.1%] | 176h | 167.2h | 12,020 | 10,720 | 10,184 |
| 33 | 1.4.2.2 | Code the software |  | 20d | 2021-03-02 A | 2021-03-29 | 32SS, 29 | 95% | 1d | 2021-03-02 | 2021-03-29 | 20d | 0d |  |  | Software Architect [5%]; Software developer [5%]; Contingency [0.1%] | 16h | 15.2h | 2,120 | 1,120 | 1,064 |
| 34 | 1.4.3 | **Quality Assure** |  | 5d | 2021-03-30 | 2021-04-05 | 31 |  |  | 2021-03-30 | 2021-04-05 | 5d | 2.8d | 0d |  |  | 12h |  | 1,350 | 1,350 |  |
| 35 | 1.4.3.1 | Conduct inspection and audits |  | 5d | 2021-03-30 | 2021-04-05 | 32, 33 |  |  | 2021-03-30 | 2021-04-05 | 5d | 2.8d | 0d |  | Director [15%]; Director of Product development and marketing [15%] | 12h |  | 1,350 | 1,350 |  |
| 36 | 1.4.4 | **Software Marketing** |  | 6d | 2021-04-06 | 2021-04-13 | 34 |  |  | 2021-04-06 | 2021-04-13 | 6d | 2.8d |  |  |  | 8h |  | 720 | 720 |  |
| 37 | 1.4.4.1 | Analysis market strategy |  | 6d | 2021-04-06 | 2021-04-13 | 35 |  |  | 2021-04-06 | 2021-04-13 | 6d | 2.8d | 0d |  | Marketing Manager [16.7%] | 8h |  | 720 | 720 |  |
| 38 | 1.4.4.2 | Scheduling of launch date | milestone | 0d | 2021-04-13 | 2021-04-13 | 37 |  |  | 2021-04-13 | 2021-04-13 | 0d | 2.8d | 0d |  |  |  |  |  |  |  |
| 39 | 1.5 | **Project Monitoring** |  | 159d | 2021-04-14 A | 2021-11-22 | 26 | 10% | 142.46d | 2021-04-14 | 2021-11-11 | 152d | 0d |  |  |  | 190.3h | 49.22h | 16,249.05 | 13,642.5 | 4,023.42 |
| 40 | 1.5.1 | **Monitoring and controlling project** |  | 6d | 2021-04-14 A | 2021-04-21 |  | 36% | 3.84d | 2021-04-14 | 2021-04-19 | 4d | 5d | 0d |  |  | 19h | 12.6h | 1,615 | 1,020 | 1,071 |
| 41 | 1.5.1.1 | Managing action team |  | 3d | 2021-04-14 | 2021-04-16 | 38 |  |  | 2021-04-14 | 2021-04-16 | 3d | 2.8d | 1d |  | Project manager [20.8%] | 5h |  | 425 | 425 |  |
| 42 | 1.5.1.2 | Managing project records |  | 2d | 2021-04-20 A | 2021-04-21 | 41 | 90% | 0.2d | 2021-04-19 | 2021-04-19 | 1d | 5d |  |  | Project manager [87.5%] | 14h | 12.6h | 1,190 | 595 | 1,071 |
| 43 | 1.5.2 | **Scope Monitoring** |  | 0d | 2021-04-21 | 2021-04-21 | 40 |  |  | 2021-04-19 | 2021-04-19 | 0d | 5d | 0d |  |  |  |  |  |  |  |
| 44 | 1.5.2.1 | Verfication of scope | milestone | 0d | 2021-04-21 | 2021-04-21 | 17 |  |  | 2021-04-19 | 2021-04-19 | 0d | 5d | 0d |  | Director; Project manager; Director of Product development and marketing |  |  |  |  |  |
| 45 | 1.5.3 | **Schedule Monitoring** |  | 12d | 2021-04-22 A | 2021-05-07 | 43 | 35% | 7.8d | 2021-04-20 | 2021-05-04 | 11d | 0d |  |  |  | 18h | 5.95h | 970 | 885 | 505.75 |
| 46 | 1.5.3.1 | Track status |  | 5d | 2021-04-22 | 2021-04-28 | 44 |  |  | 2021-04-20 | 2021-04-26 | 5d | 5.95d | 0d |  | Project Coordinator [12.5%] | 5h |  | 375 | 375 |  |
| 47 | 1.5.3.2 | Manage working schedule |  | 7d | 2021-04-29 A | 2021-05-07 | 46 | 85% | 1.05d | 2021-04-27 | 2021-05-04 | 6d | 0d |  |  | Project manager [12.5%] | 7h | 5.95h | 595 | 510 | 505.75 |
| 48 | 1.5.3.3 | Monitor work plans |  | 5d | 2021-05-03 | 2021-05-07 | 47FF |  |  | 2021-04-28 | 2021-05-04 | 5d | 0d |  |  |  | 6h |  |  |  |  |
| 49 | 1.5.4 | **Monitoring quality** |  | 11d | 2021-05-10 A | 2021-05-24 | 45 |  | 11d | 2021-05-05 | 2021-05-20 | 12d | 11d | 0d |  |  | 60.86h |  | 6,191.43 | 5,235 |  |
| 50 | 1.5.4.1 | Testing the Software |  | 6d | 2021-05-10 A | 2021-05-17 | 33FS+2d |  | 6d | 2021-05-05 | 2021-05-13 | 7d | 11d | 0d |  | Software Testing Engineer [14.3%]; Contingency [0.1%] | 6.86h |  | 1,436.43 | 480 |  |
| 51 | 1.5.4.2 | Conducting quality check |  | 5d | 2021-05-18 | 2021-05-24 | 50 |  |  | 2021-05-14 | 2021-05-20 | 5d | 11d |  |  | Director of Product development and marketing [17.5%]; Software Testing Engineer [17.5%]; Product Business Analyst | 54h |  | 4,755 | 4,755 |  |

Notes:
- 30: Controlling the team must finish as soon as the project team are provided with the software and testing training. So, there is no time delay between the training and start of the coding.
- 33: The coding of the software and designing of the software should go hand in hand. As, software structure design and software coding are directly linked with each other.
- 37: Historical data technique has been used in analysis market strategy. As the marketing team already have the data of the existing software in the market. Use of existing market survey data can reduce the cost, and time of the project. This have reduced the analysis time to 6 days from 15 days.
- 48: Once project manager is do with managing working schedule, the monitoring of work plans is done automatically. So, the task are finish-to-finish.

| ID | WBS | Task | Type | Duration | Start | Finish | Predecessors | Complete | Remaining | Baseline start | Baseline finish | Baseline duration | Total slack | Free slack | Constraint | Resources | Work | Actual work | Cost | Baseline cost | Actual cost |
| --- | --- | --- | --- | --- | --- | --- | --- | --- | --- | --- | --- | --- | --- | --- | --- | --- | --- | --- | --- | --- | --- |
| 52 | 1.5.5 | **Monitoring Finance** |  | 97d | 2021-05-25 A | 2021-10-06 | 49 | 4% | 93.04d | 2021-05-21 | 2021-09-29 | 94d | 8d | 0d |  |  | 10.42h | 6.67h | 729.17 | 612.5 | 466.67 |
| 53 | 1.5.5.1 | Mointoring cost |  | 94d | 2021-05-25 | 2021-10-01 | 44, 25 |  |  | 2021-05-21 | 2021-09-29 | 94d | 11d |  | start no earlier than 2021-01-15 | Finance Manager [9.4%] | 3.75h |  | 262.5 | 262.5 |  |
| 54 | 1.5.5.2 | Control cost |  | 4d | 2021-10-01 A | 2021-10-06 A | 53FF | 100% |  | 2021-09-27 | 2021-09-29 | 3d |  |  |  | Finance Manager [20.8%] | 6.67h | 6.67h | 466.67 | 350 | 466.67 |
| 55 | 1.5.6 | **Managing Stakeholder** |  | 12d | 2021-10-07 A | 2021-10-22 | 52 | 30% | 8.4d | 2021-09-30 | 2021-10-12 | 9d | 2d | 0d |  |  | 23.86h | 12h | 1,959.29 | 1,365 | 1,020 |
| 56 | 1.5.6.1 | Manage communication |  | 6d | 2021-10-07 | 2021-10-14 | 30, 48 |  |  | 2021-09-30 | 2021-10-08 | 7d | 8d |  |  | Project Coordinator [14.3%] | 6.86h |  | 514.29 | 600 |  |
| 57 | 1.5.6.2 | Conduct meetings |  | 3d | 2021-10-19 A | 2021-10-21 A | 56, 51 | 100% |  | 2021-10-11 | 2021-10-11 | 1d |  |  |  | Project manager [50%] | 12h | 12h | 1,020 | 340 | 1,020 |
| 58 | 1.5.6.3 | Provide weekly reports |  | 1d | 2021-10-22 | 2021-10-22 | 57, 42FS-1d |  |  | 2021-10-12 | 2021-10-12 | 1d | 2d | 0d |  | Project manager [62.5%] | 5h |  | 425 | 425 |  |
| 59 | 1.5.7 | **Manage project team** |  | 2d | 2021-10-25 | 2021-10-26 | 55 |  |  | 2021-10-13 | 2021-10-15 | 3d | 2d | 0d |  |  | 5.5h |  | 467.5 | 595 |  |
| 60 | 1.5.7.1 | Conduct meeting |  | 1d | 2021-10-25 | 2021-10-25 | 58 |  |  | 2021-10-13 | 2021-10-13 | 1d | 2d | 0d |  | Project manager [50%] | 4h |  | 340 | 340 |  |
| 61 | 1.5.7.2 | Conducting team review |  | 1d | 2021-10-26 | 2021-10-26 | 60 |  |  | 2021-10-14 | 2021-10-15 | 2d | 2d | 0d |  | Project manager [18.8%] | 1.5h |  | 127.5 | 255 |  |
| 62 | 1.5.8 | **Monitor Risk** |  | 4d | 2021-10-27 | 2021-11-01 | 59 |  |  | 2021-10-18 | 2021-10-21 | 4d | 2d | 0d |  |  | 3h |  | 255 | 255 |  |
| 63 | 1.5.8.1 | Monitoring and controlling risk |  | 4d | 2021-10-27 | 2021-11-01 | 61 |  |  | 2021-10-18 | 2021-10-21 | 4d | 2d | 0d |  | Project manager [9.4%] | 3h |  | 255 | 255 |  |
| 64 | 1.5.9 | **Project Closure** |  | 4d | 2021-11-01 A | 2021-11-06 | 62 | 67% | 1.33d | 2021-10-21 | 2021-10-25 | 2d | 0d |  |  |  | 15h | 12h | 1,215 | 735 | 960 |
| 65 | 1.5.9.1 | Submitting results and lesson learned | milestone | 0d | 2021-11-01 | 2021-11-01 | 63 |  |  | 2021-10-21 | 2021-10-21 | 0d | 3d | 0d |  |  |  |  |  |  |  |
| 66 | 1.5.9.2 | Feedback from project team |  | 1d | 2021-11-02 | 2021-11-02 | 65, 38 |  |  | 2021-10-22 | 2021-10-22 | 1d | 3d |  |  | Project manager [37.5%] | 3h |  | 255 | 255 |  |
| 67 | 1.5.9.3 | Reviewing project team |  | 2d | 2021-11-04 A | 2021-11-06 A | 66 | 100% |  | 2021-10-25 | 2021-10-25 | 1d |  |  |  | Project Coordinator [37.5%]; Project manager [37.5%] | 12h | 12h | 960 | 480 | 960 |
| 68 | 1.5.10 | **Project Management** |  | 11d | 2021-11-08 | 2021-11-22 | 64 |  |  | 2021-10-26 | 2021-11-11 | 13d | 0d |  |  |  | 34.67h |  | 2,846.67 | 2,940 |  |
| 69 | 1.5.10.1 | **Meetings** |  | 4d | 2021-11-08 | 2021-11-11 |  |  |  | 2021-10-26 | 2021-10-29 | 4d | 0d |  |  |  | 14h |  | 1,420 | 1,420 |  |
| 70 | 1.5.10.1.1 | Project meetings |  | 3d | 2021-11-08 | 2021-11-10 | 66, 67 |  |  | 2021-10-26 | 2021-10-28 | 3d | 0d |  |  | Director of Product development and marketing [4.2%]; Project manager [4.2%] | 2h |  | 190 | 190 |  |
| 71 | 1.5.10.1.2 | Meeting with stakeholders |  | 1d | 2021-11-11 | 2021-11-11 | 70, 66 |  |  | 2021-10-29 | 2021-10-29 | 1d | 0d |  |  | Director [75%]; Project manager [75%] | 12h |  | 1,230 | 1,230 |  |
| 72 | 1.5.10.2 | **Project Cost Management** |  | 1d | 2021-11-12 | 2021-11-12 | 69 |  |  | 2021-11-01 | 2021-11-03 | 3d | 0d |  |  |  | 0.67h |  | 46.67 | 140 |  |
| 73 | 1.5.10.2.1 | Budgeting |  | 1d | 2021-11-12 | 2021-11-12 | 17, 54 |  |  | 2021-11-01 | 2021-11-03 | 3d | 0d |  |  | Finance Manager [8.3%] | 0.67h |  | 46.67 | 140 |  |
| 74 | 1.5.10.3 | **Customer Feedback** |  | 6d | 2021-11-15 | 2021-11-22 | 72 |  |  | 2021-11-04 | 2021-11-11 | 6d | 0d |  |  |  | 20h |  | 1,380 | 1,380 |  |
| 75 | 1.5.10.3.1 | Record customer feedback |  | 3d | 2021-11-15 | 2021-11-17 | 37 |  |  | 2021-11-04 | 2021-11-08 | 3d | 0d |  |  | Project manager [16.7%] | 4h |  | 340 | 340 |  |
| 76 | 1.5.10.3.2 | Changes in software |  | 3d | 2021-11-18 | 2021-11-22 | 75, 73 |  |  | 2021-11-09 | 2021-11-11 | 3d | 0d |  |  | Software Architect [16.7%]; Software developer [16.7%]; Software Testing Engineer [16.7%]; UI/UX Designer [16.7%] | 16h |  | 1,040 | 1,040 |  |

Notes:
- 54: Monitoring and controling the cost of the project should hold together throughout the project. It will ensure better understanding of the project budget.
